# rCARI Validation Study

Schedule from GanttProject, 2023-05-08 to 2023-09-27.
WFP

## Calendars

- Project calendar: Mon-Fri working; Sat-Sun off.

## Schedule

| ID | WBS | Task | Duration | Start | Finish | Predecessors | Complete | Constraint |
| --- | --- | --- | --- | --- | --- | --- | --- | --- |
| 1 | 1 | **Myanmar** | 45d | 2023-05-08 | 2023-07-07 |  | 90% |  |
| 2 | 1.1 | Enumerator Training | 5d | 2023-05-08 | 2023-05-12 |  | 100% |  |
| 3 | 1.2 | Data Collection | 15d | 2023-06-05 | 2023-06-23 | 2FS+15d | 100% | start no earlier than 2023-06-05 |
| 4 | 1.3 | Data Cleaning & Analysis | 24d | 2023-06-06 | 2023-07-07 | 3SS+1d | 90% |  |
| 5 | 1.4 | Summary Report | 5d | 2023-07-03 | 2023-07-07 | 4FF | 50% |  |
| 6 | 2 | **Ecuador** | 35d | 2023-06-05 | 2023-07-21 |  | 56% |  |
| 7 | 2.1 | Enumerator Training | 5d | 2023-06-05 | 2023-06-09 |  | 100% |  |
| 8 | 2.2 | Data Collection | 24d | 2023-06-15 | 2023-07-18 | 7FS+3d | 65% |  |
| 9 | 2.3 | Data Cleaning & Analysis | 26d | 2023-06-16 | 2023-07-21 | 8SS+1d | 50% |  |
| 10 | 2.4 | Summary Report | 5d | 2023-07-17 | 2023-07-21 | 9FF |  |  |
| 11 | 3 | **CAR** | 35d | 2023-07-10 | 2023-08-25 |  |  |  |
| 12 | 3.1 | Sampling Listing | 5d | 2023-07-10 | 2023-07-14 |  |  |  |
| 13 | 3.2 | Enumerator Training | 5d | 2023-07-17 | 2023-07-21 | 12 |  |  |
| 14 | 3.3 | Data Collection | 17d | 2023-07-24 | 2023-08-15 | 13 |  |  |
| 15 | 3.4 | Data Cleaning & Analysis | 24d | 2023-07-25 | 2023-08-25 | 14SS+1d |  |  |
| 16 | 3.5 | Summary Report | 5d | 2023-08-21 | 2023-08-25 | 15FF |  |  |
| 17 | 4 | Nicole's BIS | 23d | 2023-08-28 | 2023-09-27 |  |  |  |
